# 2020.09.07 - 2020.10.17

Schedule from GanttProject, 2020-09-07 to 2020-11-27.

## Calendars

- Project calendar: Mon-Fri working; Sat-Sun off. Exceptions (off unless hours are given): 2020-10-01 to 2020-10-07.

## Resources

| Resource |
| --- |
| 黄磊磊 |
| 蔡宇杰 |
| 施淳信 |
| 刘迅 |
| 刘畅 |
| 李婷婷 |
| 侯秉镜 |
| 邹宇亮 |

## Schedule

| ID | WBS | Task | Duration | Start | Finish | Predecessors | Complete | Resources |
| --- | --- | --- | --- | --- | --- | --- | --- | --- |
| 1 | 1 | **进行中** | 13d | 2020-10-21 | 2020-11-06 |  | 42% |  |
| 2 | 1.1 | **F265** | 5d | 2020-11-02 | 2020-11-06 |  | 60% |  |
| 3 | 1.1.1 | 更新common文档 | 5d | 2020-11-02 | 2020-11-06 | 34, 36 | 80% | 刘畅 |
| 4 | 1.1.2 | 更新RFC文档 | 5d | 2020-11-02 | 2020-11-06 | 34 | 80% | 李婷婷 |
| 5 | 1.1.3 | 更新ILF文档 | 5d | 2020-11-02 | 2020-11-06 | 34, 38 | 80% | 侯秉镜 |
| 6 | 1.1.4 | 更新E_C文档 | 5d | 2020-11-02 | 2020-11-06 | 34, 39 |  | 邹宇亮 |
| 7 | 1.2 | **H265** | 13d | 2020-10-21 | 2020-11-06 |  | 36% |  |
| 8 | 1.2.1 | 优化ILF | 5d | 2020-10-26 | 2020-10-30 |  | 80% | 刘迅 |
| 9 | 1.2.2 | 优化ITF | 5d | 2020-10-26 | 2020-10-30 |  |  | 施淳信 |
| 10 | 1.2.3 | 梳理串联ITF | 5d | 2020-10-21 | 2020-10-27 | 51, 52 | 80% | 李婷婷 |
| 11 | 1.2.4 | 梳理串联ILF | 5d | 2020-10-21 | 2020-10-27 | 51, 52 | 50% | 侯秉镜 |
| 12 | 1.2.5 | 梳理串联E_C | 5d | 2020-10-21 | 2020-10-27 | 51, 52 | 80% | 邹宇亮 |
| 13 | 1.2.6 | 更新RFC文档 | 5d | 2020-11-02 | 2020-11-06 | 10, 54 |  | 李婷婷 |
| 14 | 1.2.7 | 更新ILF文档 | 5d | 2020-11-02 | 2020-11-06 | 11, 54 |  | 侯秉镜 |
| 15 | 1.2.8 | 更新E_C文档 | 5d | 2020-11-02 | 2020-11-06 | 12, 54 |  | 邹宇亮 |
| 16 | 2 | **已完成** | 45d | 2020-09-07 | 2020-11-13 |  | 100% |  |
| 17 | 2.1 | **建立软件工作流程和相关文档** | 30d | 2020-09-07 | 2020-10-23 |  | 100% |  |
| 18 | 2.1.1 | 建立软件工作流程和相关文档 | 10d | 2020-09-07 | 2020-09-18 |  | 100% | 黄磊磊 |
| 19 | 2.1.2 | 建立硬件工作流程和相关文档 | 10d | 2020-09-21 | 2020-10-09 |  | 100% | 黄磊磊 |
| 20 | 2.1.3 | 迭代调整 | 10d | 2020-10-12 | 2020-10-23 | 18, 19 | 100% | 黄磊磊 |
| 21 | 2.2 | **F265** | 45d | 2020-09-07 | 2020-11-13 |  | 100% |  |
| 22 | 2.2.1 | 整理RMD、IME、FME、RDO | 5d | 2020-09-07 | 2020-09-11 |  | 100% | 黄磊磊 |
| 23 | 2.2.2 | 整理FTH、DMP | 5d | 2020-09-14 | 2020-09-18 |  | 100% | 黄磊磊 |
| 24 | 2.2.3 | 调试基于E_C的P帧RDO | 13d | 2020-09-14 | 2020-09-30 |  | 100% | 蔡宇杰 |
| 25 | 2.2.4 | 集成RFC | 13d | 2020-09-14 | 2020-09-30 |  | 100% | 李婷婷 |
| 26 | 2.2.5 | 重构REC | 8d | 2020-09-21 | 2020-09-30 | 23 | 100% | 刘畅 |
| 27 | 2.2.6 | 整理ILF | 8d | 2020-09-21 | 2020-09-30 | 23 | 100% | 侯秉镜 |
| 28 | 2.2.7 | 整理E_C | 8d | 2020-09-21 | 2020-09-30 | 23 | 100% | 邹宇亮 |
| 29 | 2.2.8 | 梳理串联RMD、IME、FME、RDO | 8d | 2020-09-21 | 2020-09-30 | 23 | 100% | 黄磊磊 |
| 30 | 2.2.9 | 收尾 | 2d | 2020-10-08 | 2020-10-09 | 29 | 100% | 黄磊磊 |
| 31 | 2.2.10 | 熟悉新F265 | 2d | 2020-10-08 | 2020-10-09 | 29 | 100% | 李婷婷; 侯秉镜; 邹宇亮 |
| 32 | 2.2.11 | 测试和对比X265 | 2d | 2020-10-08 | 2020-10-09 |  | 100% | 施淳信 |
| 33 | 2.2.12 | 测试和对比VeriSilicon, Chips&Media | 2d | 2020-10-08 | 2020-10-09 |  | 100% | 刘迅 |
| 34 | 2.2.13 | 更新RMD、IME、FME、RDO文档 | 5d | 2020-10-12 | 2020-10-16 |  | 100% | 黄磊磊 |
| 35 | 2.2.14 | 梳理串联ITF | 5d | 2020-10-12 | 2020-10-16 | 30, 31 | 100% | 李婷婷 |
| 36 | 2.2.15 | 梳理串联common | 9d | 2020-10-13 | 2020-10-23 |  | 100% | 黄磊磊; 刘畅 |
| 37 | 2.2.16 | 测试和对比HM16.0 | 2d | 2020-10-14 | 2020-10-15 |  | 100% | 施淳信 |
| 38 | 2.2.17 | 梳理串联ILF | 5d | 2020-10-14 | 2020-10-20 | 30, 31 | 100% | 侯秉镜 |
| 39 | 2.2.18 | 梳理串联E_C | 5d | 2020-10-15 | 2020-10-21 | 30, 31 | 100% | 邹宇亮 |
| 40 | 2.2.19 | 整理核验各类环境 | 5d | 2020-10-16 | 2020-10-22 | 32, 33, 37 | 100% | 黄磊磊 |
| 41 | 2.2.20 | 最终调整 | 5d | 2020-10-26 | 2020-10-30 | 35, 36, 38, 39 | 100% | 黄磊磊 |
| 42 | 2.2.21 | 加入MRG、SKP | 10d | 2020-11-02 | 2020-11-13 | 24 | 100% | 蔡宇杰 |
| 43 | 2.2.22 | 加入IIP | 10d | 2020-11-02 | 2020-11-13 |  | 100% | 黄磊磊 |

| ID | WBS | Task | Duration | Start | Finish | Predecessors | Complete | Resources |
| --- | --- | --- | --- | --- | --- | --- | --- | --- |
| 44 | 2.3 | **H265** | 35d | 2020-09-07 | 2020-10-30 |  | 100% |  |
| 45 | 2.3.1 | 调试emulator | 5d | 2020-09-07 | 2020-09-11 |  | 100% | 蔡宇杰 |
| 46 | 2.3.2 | 修复时序问题 | 5d | 2020-09-07 | 2020-09-11 |  | 100% | 施淳信 |
| 47 | 2.3.3 | 修复逻辑问题 | 5d | 2020-09-07 | 2020-09-11 |  | 100% | 刘迅 |
| 48 | 2.3.4 | 同步RMD、IME、FME、RDO | 10d | 2020-09-14 | 2020-09-25 |  | 100% | 黄磊磊 |
| 49 | 2.3.5 | 建立VCS环境 | 3d | 2020-09-28 | 2020-09-30 |  | 100% | 施淳信 |
| 50 | 2.3.6 | 创建RFC仿真环境 | 3d | 2020-09-28 | 2020-09-30 |  | 100% | 李婷婷 |
| 51 | 2.3.7 | 梳理串联RMD、IME、FME、RDO | 10d | 2020-09-28 | 2020-10-16 | 48 | 100% | 黄磊磊 |
| 52 | 2.3.8 | 熟悉新H265 | 2d | 2020-10-19 | 2020-10-20 | 51 | 100% | 李婷婷; 侯秉镜; 邹宇亮 |
| 53 | 2.3.9 | 整理核验各类环境 | 5d | 2020-10-19 | 2020-10-23 |  | 100% | 黄磊磊 |
| 54 | 2.3.10 | 更新RMD、IME、FME文档 | 5d | 2020-10-26 | 2020-10-30 |  | 100% | 黄磊磊 |
| 55 | 3 | **计划中** | 5d | 2020-11-23 | 2020-11-27 |  |  |  |
| 56 | 3.1 | **F265** | 5d | 2020-11-23 | 2020-11-27 |  |  |  |
| 57 | 3.1.1 | 加入R_C | 5d | 2020-11-23 | 2020-11-27 |  |  |  |
| 58 | 3.1.2 | 加入新特性 | 5d | 2020-11-23 | 2020-11-27 |  |  |  |
| 59 | 3.2 | **H265** | 5d | 2020-11-23 | 2020-11-27 |  |  |  |
| 60 | 3.2.1 | 同步IIP | 5d | 2020-11-23 | 2020-11-27 |  |  |  |
| 61 | 3.2.2 | 同步MRG、SKP | 5d | 2020-11-23 | 2020-11-27 |  |  |  |
| 62 | 3.2.3 | 同步R_C | 5d | 2020-11-23 | 2020-11-27 |  |  |  |
| 63 | 3.2.4 | 同步新特性 | 5d | 2020-11-23 | 2020-11-27 |  |  |  |
